# PROGRAMACION TAMBOBAMBA

Schedule from MS Project, 2020-08-18 to 2020-10-21, costs in S.

## Calendars

- Estándar: Mon-Sun 07:00-12:00, 13:00-16:00.

## Schedule

| ID | WBS | Task | Duration | Start | Finish | Predecessors | Total slack | Free slack | Constraint | Cost |
| --- | --- | --- | --- | --- | --- | --- | --- | --- | --- | --- |
| 1 | 1 | **SP: INFRAESTRUCTURA** | 60d | 2020-08-18 | 2020-10-17 |  | 0d |  |  | 63,077.8 |
| 2 | 1 | **TRABAJOS PRELIMINARES** | 13d | 2020-08-18 | 2020-08-31 |  | 0d |  |  | 6,921.67 |
| 3 | 1.1 | LIMPIEZA MANUAL DE TERRENO | 1d | 2020-08-24 | 2020-08-25 |  | 0d |  | start no earlier than 2020-08-24 | 100 |
| 4 | 1.2 | DEMOLICIÓN DE MUROS DE LADRILLO KK-SOGA, MANUAL | 7d | 2020-08-18 | 2020-08-25 | 3FF | 0d |  |  | 1,037.18 |
| 5 | 1.3 | DESMONTAJE DE PUERTAS DE MADERA | 1d | 2020-08-24 | 2020-08-25 | 4FF | 0d |  |  | 160.38 |
| 6 | 1.4 | DESMONTAJE DE VENTANAS | 1d | 2020-08-24 | 2020-08-25 | 4FF | 0d |  |  | 24.11 |
| 7 | 1.5 | TRASLADO DE MATERIALES A OBRA | 7d | 2020-08-24 | 2020-08-31 |  | 51d |  | start no earlier than 2020-08-24 | 5,600 |
| 8 | 2 | **MOVIMIENTO DE TIERRAS** | 20d | 2020-08-25 | 2020-09-14 |  | 37d |  |  | 9,765.69 |
| 9 | 2.1 | ACARREO INTERNO DE MATERIAL HASTA UNA DISTANCIA D=30M | 10d | 2020-08-25 | 2020-09-04 | 5, 6 | 37d | 0d |  | 1,348.11 |
| 10 | 2.2 | ELIMINACION DE MATERIAL EXCEDENTE CARGUIO MANUAL V=15M3 | 10d | 2020-09-04 | 2020-09-14 | 9 | 37d |  |  | 8,417.58 |
| 11 | 3 | **MUROS Y TABIQUES DE DRYWALL** | 1d | 2020-08-25 | 2020-08-26 |  | 0d |  |  | 851.1 |
| 12 | 3.1 | TABIQUERIA DRYWALL CON PLACAS DE FIBROCEMENTO E=6MM | 1d | 2020-08-25 | 2020-08-26 | 5, 6 | 0d |  |  | 851.1 |
| 13 | 4 | **REVOQUES Y REVESTIMIENTOS** | 3d | 2020-08-26 | 2020-08-29 |  | 0d |  |  | 731.34 |
| 14 | 4.1 | TARRAJEO INTERIOR EN MUROS C:A 1:5 e=1.50cm | 1d | 2020-08-26 | 2020-08-27 | 12 | 0d |  |  | 114.23 |
| 15 | 4.2 | VESTIDURA DE DERRAMES C:A 1:5 | 2d | 2020-08-27 | 2020-08-29 | 14 | 0d |  |  | 617.11 |
| 16 | 5 | **PISOS, PAVIMENTOS Y ACABADOS** | 15d | 2020-08-25 | 2020-09-09 |  | 4d |  |  | 2,742.76 |
| 17 | 5.1 | PISO DE CERAMICO 30x30cm COLOR CLARO | 3d | 2020-08-29 | 2020-09-01 | 14, 15 | 0d |  |  | 1,129.9 |
| 18 | 5.2 | LIMPIEZA Y DESINFECCION DE PISO CERÁMICO | 8d | 2020-09-01 | 2020-09-09 | 17 | 0d |  |  | 1,075.82 |
| 19 | 5.3 | VEREDA DE CONCRETO f'c=175kg/cm2 E=10cm, ACABADO SEMIPULIDO Y BRUÑADO C/METRO | 1d | 2020-08-25 | 2020-08-26 | 3 | 56d |  |  | 537.04 |
| 20 | 6 | **ZOCALOS Y CONTRAZOCALOS** | 3d | 2020-09-06 | 2020-09-09 |  | 0d |  |  | 1,694.7 |
| 21 | 6.1 | CONTRAZOCALO SANITARIO VINILICO TIPO COVE FORMER E=2 MM | 3d | 2020-09-06 | 2020-09-09 | 18FF | 0d |  |  | 1,694.7 |
| 22 | 7 | **ESTRUCTURAS METÁLICAS Y COBERTURA** | 7d | 2020-09-09 | 2020-09-16 |  | 33d |  |  | 7,200.32 |
| 23 | 7.1 | CORREAS DE TUBO LAC 25X50X2.0mm | 1d | 2020-09-12 | 2020-09-13 | 24 | 33d | 0d |  | 484.26 |
| 24 | 7.2 | TIJERALES CON TUBO RECT. LAC - TIPO | 3d | 2020-09-09 | 2020-09-12 | 21 | 33d | 0d |  | 5,174.34 |
| 25 | 7.3 | COBERTURA DE POLICARBONATO ALVEOLAR | 2d | 2020-09-13 | 2020-09-15 | 23 | 33d | 0d |  | 760.16 |
| 26 | 7.4 | CANALETA DE PLANCHA GALVANIZADA | 1d | 2020-09-15 | 2020-09-16 | 25 | 33d | 0d |  | 781.56 |

| ID | WBS | Task | Duration | Start | Finish | Predecessors | Total slack | Cost |
| --- | --- | --- | --- | --- | --- | --- | --- | --- |
| 27 | 8 | **CIELORRASO** | 2d | 2020-09-16 | 2020-09-18 |  | 33d | 4,475.02 |
| 28 | 8.1 | CIELO RASO CON BALDOSA SUPERBOARD | 2d | 2020-09-16 | 2020-09-18 | 26 | 33d | 4,475.02 |
| 29 | 9 | **CARPINTERIA DE MADERA** | 5d | 2020-09-09 | 2020-09-14 |  | 0d | 2,294.1 |
| 30 | 9.1 | PUERTAS DE MADERA CONTRAPLACADA C/MARCO DOS HOJAS | 2d | 2020-09-09 | 2020-09-11 | 21 | 0d | 591.1 |
| 31 | 9.2 | PUERTAS DE MADERA CONTRAPLACADA C/MARCO UNA HOJA | 2d | 2020-09-11 | 2020-09-13 | 30 | 0d | 1,010 |
| 32 | 9.3 | VENTANAS DE ALUMINIO (INC. VIDRIO) | 1d | 2020-09-13 | 2020-09-14 | 31 | 37d | 693 |
| 33 | 10 | **CERRAJERIA** | 2d | 2020-09-12 | 2020-09-14 |  | 1d | 884.25 |
| 34 | 10.1 | BISAGRA CAPUCHINA DE ACERO DE 3"X4" | 1d | 2020-09-12 | 2020-09-13 | 31FF | 38d | 194.25 |
| 35 | 10.2 | CERRADURA TIPO PERILLA CON SEGURIDAD | 1d | 2020-09-13 | 2020-09-14 | 30, 31 | 0d | 690 |
| 36 | 11 | **PINTURA** | 22d | 2020-09-14 | 2020-10-06 |  | 0d | 15,390.82 |
| 37 | 11.1 | LIJADO Y EMPASTADO DE PAREDES INTERIORES Y EXTERIORES | 10d | 2020-09-14 | 2020-09-24 | 35 | 0d | 4,320.35 |
| 38 | 11.2 | PINTADO DE MURO INTERIOR CON PINTURA VINÍLICA ANTIBACTERIAL | 8d | 2020-09-24 | 2020-10-02 | 37 | 0d | 7,483.87 |
| 39 | 11.3 | PINTURA EN PUERTAS DE MADERA AL OLEO - 2 MANOS | 4d | 2020-09-30 | 2020-10-04 | 38FS-2d | 0d | 2,257.1 |
| 40 | 11.4 | PINTADO DE MURO EXTERIOR CON LATEX SATINADO 2 MANOS | 1d | 2020-10-04 | 2020-10-05 | 39 | 0d | 278.8 |
| 41 | 11.5 | PINTURA EN DERRAMES AL LATEX SATINADO 2 MANOS | 1d | 2020-10-04 | 2020-10-05 | 40FF | 0d | 668.53 |
| 42 | 11.6 | PINTURA DE CONTRAZOCALO CON ESMALTE, H= 0.30m | 1d | 2020-10-05 | 2020-10-06 | 41 | 0d | 382.17 |
| 43 | 12 | **INSTALACIONES SANITARIAS** | 3d | 2020-10-06 | 2020-10-09 |  | 0d | 6,485.36 |
| 44 | 12.1 | CAMBIO DE VALVULA DE COMPUERTA DE 1/2" | 1d | 2020-10-06 | 2020-10-07 | 42 | 0d | 185.36 |
| 45 | 12.2 | LAVAMANOS DE PARED A PEDAL (INC. GRIFO) | 1d | 2020-10-07 | 2020-10-08 | 44 | 0d | 1,300 |
| 46 | 12.3 | CAMBIO Y REPARACIÓN DE ACCESORIOS SANITARIOS (AGUA Y DESAGUE) | 1d | 2020-10-08 | 2020-10-09 | 45 | 0d | 5,000 |
| 47 | 13 | **INSTALACIONES ELÉCTRICAS** | 8d | 2020-10-09 | 2020-10-17 |  | 0d | 3,640.67 |
| 48 | 13.1 | REPARACIÓN DE SALIDA PARA CENTRO DE LUZ EN TECHO | 1d | 2020-10-09 | 2020-10-10 | 46 | 0d | 427.84 |
| 49 | 13.2 | INTERRUPTOR UNIPOLAR SIMPLE | 1d | 2020-10-10 | 2020-10-11 | 48 | 0d | 212.52 |
| 50 | 13.3 | SALIDA PARA TOMACORRIENTE EQUIPAMIENTO MEDICO | 2d | 2020-10-11 | 2020-10-13 | 49 | 0d | 913.44 |
| 51 | 13.4 | RIELES DE PARED PARA CABLE ELECTRICO | 1d | 2020-10-13 | 2020-10-14 | 50 | 0d | 256.74 |
| 52 | 13.5 | SPOT LIGHT ADOSABLE CON AHORRADOR COMPACTO DE 2x32 W. | 1d | 2020-10-14 | 2020-10-15 | 51 | 0d | 208.63 |
| 53 | 13.6 | TABLERO ELECTRICO TN-A02 | 1d | 2020-10-15 | 2020-10-16 | 52 | 0d | 637.37 |
| 54 | 13.7 | POZO DE PUESTA A TIERRA | 1d | 2020-10-16 | 2020-10-17 | 53 | 0d | 984.13 |

| ID | WBS | Task | Duration | Start | Finish | Predecessors | Total slack | Cost |
| --- | --- | --- | --- | --- | --- | --- | --- | --- |
| 55 | 2 | **SP: EQUIPAMIENTO Y MOBILIARIO** | 4d | 2020-10-17 | 2020-10-21 |  | 0d | 326,324.98 |
| 56 | 14 | **EQUIPAMIENTO Y MOBILIARIO** | 4d | 2020-10-17 | 2020-10-21 |  | 0d | 326,324.98 |
| 57 | 14.1 | **EQUIPAMIENTO MEDICO** | 1d | 2020-10-17 | 2020-10-18 |  | 0d | 99,545.64 |
| 58 | 14.1.1 | MONITOR DE FUNCIONES VITALES DE 05 PARÁMETROS | 1d | 2020-10-17 | 2020-10-18 | 54 | 0d | 27,429.3 |
| 59 | 14.1.2 | ASPIRADOR DE SECRECIONES RODABLE | 1d | 2020-10-17 | 2020-10-18 | 58FF | 3d | 39,923 |
| 60 | 14.1.3 | BOMBA DE INFUSIÓN DE DOS CANALES | 1d | 2020-10-17 | 2020-10-18 | 58FF | 0d | 32,193.34 |
| 61 | 14.2 | **EQUIPAMIENTO COMPLEMENTARIO** | 1d | 2020-10-18 | 2020-10-19 |  | 0d | 129,547.34 |
| 62 | 14.2.1 | OXÍMETRO DE PULSO | 1d | 2020-10-18 | 2020-10-19 | 60 | 0d | 5,990 |
| 63 | 14.2.2 | NEBULIZADOR | 1d | 2020-10-18 | 2020-10-19 | 62FF | 2d | 8,535 |
| 64 | 14.2.3 | CAMARA DE AISLAMIENTO Y TRANSPORTE | 1d | 2020-10-18 | 2020-10-19 | 62FF | 2d | 45,500 |
| 65 | 14.2.4 | BALANZA MECÁNICA CON TALLIMETRO ADULTO | 1d | 2020-10-18 | 2020-10-19 | 62FF | 2d | 2,550 |
| 66 | 14.2.5 | PULSIOXÍMETRO PORTATIL | 1d | 2020-10-18 | 2020-10-19 | 62FF | 2d | 3,270.67 |
| 67 | 14.2.6 | ANALIZADOR AUTOMÁTICO DE GASES ARTERIALES Y ELECTROLITOS | 1d | 2020-10-18 | 2020-10-19 | 62FF | 2d | 31,296.67 |
| 68 | 14.2.7 | ANALIZADOR BIOQUÍMICO SEMI AUTOMÁTICO | 1d | 2020-10-18 | 2020-10-19 | 62FF | 0d | 32,405 |
| 69 | 14.3 | **EQUIPO ELECTROMECÁNICO** | 1d | 2020-10-19 | 2020-10-20 |  | 0d | 66,000 |
| 70 | 14.3.1 | CONCENTRADOR DE OXÍGENO | 1d | 2020-10-19 | 2020-10-20 | 68 | 0d | 66,000 |
| 71 | 14.4 | **MOBILIARIO CLÍNICO** | 1d | 2020-10-20 | 2020-10-21 |  | 0d | 31,232 |
| 72 | 14.4.1 | CAMA CLÍNICA RODABLE | 1d | 2020-10-20 | 2020-10-21 | 70 | 0d | 18,000 |
| 73 | 14.4.2 | MESA DE ACERO INOXIDABLE RODABLE PARA MÚLTIPLES USOS | 1d | 2020-10-20 | 2020-10-21 | 72FF | 0d | 9,360 |
| 74 | 14.4.3 | MESA (DIVAN) PARA EXAMENES Y CURACIONES | 1d | 2020-10-20 | 2020-10-21 | 72FF | 0d | 1,375 |
| 75 | 14.4.4 | VITRINA DE ACERO INOXIDABLE PARA INSTRUMENTAL Y MATERIAL ESTERIL DE UN CUERPO | 1d | 2020-10-20 | 2020-10-21 | 72FF | 0d | 2,497 |
