# PROGRAMACION HUACCANA

Schedule from MS Project, 2020-08-24 to 2020-10-23, costs in S.

## Calendars

- calendario Huaccana: Mon-Sun 07:00-12:00, 13:00-16:00.

## Schedule

| ID | WBS | Task | Duration | Start | Finish | Predecessors | Total slack | Free slack | Cost |
| --- | --- | --- | --- | --- | --- | --- | --- | --- | --- |
| 1 | 1 | **SP: INFRAESTRUCTURA** | 50d | 2020-08-24 | 2020-10-13 |  | 0d |  | 88,352.91 |
| 2 | 1 | **TRABAJOS PRELIMINARES** | 9d | 2020-08-24 | 2020-09-02 |  | 0d |  | 7,196.59 |
| 3 | 1.1 | LIMPIEZA MANUAL DE AMBIENTES | 4d | 2020-08-24 | 2020-08-28 |  | 0d |  | 612.96 |
| 4 | 1.2 | DEMOLICIÓN DE MUROS DE LADRILLO KK-SOGA, MANUAL | 3d | 2020-08-28 | 2020-08-31 | 3 | 0d |  | 446.41 |
| 5 | 1.3 | DESMONTAJE DE MUROS DE DRYWALL | 1d | 2020-08-31 | 2020-09-01 | 4 | 0d |  | 275.52 |
| 6 | 1.4 | DESMONTAJE DE PUERTAS DE MADERA | 1d | 2020-09-01 | 2020-09-02 | 5 | 0d |  | 261.7 |
| 7 | 1.5 | TRASLADO DE MATERIALES A OBRA | 1d | 2020-08-24 | 2020-08-25 | 3SS | 59d |  | 5,600 |
| 8 | 2 | **MOVIMIENTO DE TIERRAS** | 2d | 2020-09-02 | 2020-09-04 |  | 49d |  | 1,347 |
| 9 | 2.1 | ACARREO INTERNO DE MATERIAL HASTA UNA DISTANCIA D=30M | 1d | 2020-09-02 | 2020-09-03 | 6 | 49d | 0d | 185.95 |
| 10 | 2.2 | ELIMINACION DE MATERIAL EXCEDENTE CARGUIO MANUAL V=15M3 | 1d | 2020-09-03 | 2020-09-04 | 9 | 49d |  | 1,161.05 |
| 11 | 3 | **MUROS Y TABIQUES DE DRYWALL** | 1d | 2020-09-02 | 2020-09-03 |  | 0d |  | 1,059.61 |
| 12 | 3.1 | TABIQUERIA DRYWALL CON PLACAS DE FIBROCEMENTO E=6MM | 1d | 2020-09-02 | 2020-09-03 | 6 | 0d |  | 1,059.61 |
| 13 | 4 | **REVOQUES Y REVESTIMIENTOS** | 1d | 2020-09-03 | 2020-09-04 |  | 49d |  | 159.08 |
| 14 | 4.1 | TARRAJEO INTERIOR EN MUROS CON YESO e=1.50cm | 1d | 2020-09-03 | 2020-09-04 | 12 | 49d |  | 159.08 |
| 15 | 5 | **PISOS, PAVIMENTOS Y ACABADOS** | 11d | 2020-09-06 | 2020-09-17 |  | 34d |  | 16,675.38 |
| 16 | 5.1 | PISO DE CEMENTO PULIDO e=0.31m | 1d | 2020-09-06 | 2020-09-07 | 44 | 34d | 0d | 282.27 |
| 17 | 5.2 | ACABADO DE PISOS Y RAMPAS CON SISTEMA MICROCEMENTO | 8d | 2020-09-07 | 2020-09-15 | 16 | 34d | 0d | 10,588.53 |
| 18 | 5.3 | PISO DE CERAMICO 30x30cm COLOR CLARO | 4d | 2020-09-11 | 2020-09-15 | 17FF | 34d | 0d | 1,785.02 |
| 19 | 5.4 | LIMPIEZA Y DESINFECCION DE PISO CERÁMICO | 2d | 2020-09-15 | 2020-09-17 | 18 | 36d |  | 251.71 |
| 20 | 5.5 | CONCRETO f'c=175kg/cm2 EN RAMPAS | 1d | 2020-09-14 | 2020-09-15 | 18FF | 34d | 0d | 417.85 |
| 21 | 5.6 | MEJORAMIENTO DE VEREDAS Y ACCESOS | 1d | 2020-09-14 | 2020-09-15 | 20FF | 34d | 0d | 3,350 |
| 22 | 6 | **ZOCALOS Y CONTRAZOCALOS** | 4d | 2020-09-15 | 2020-09-19 |  | 34d |  | 2,753.89 |
| 23 | 6.1 | CONTRAZOCALO SANITARIO VINILICO TIPO COVE FORMER E=2 MM | 4d | 2020-09-15 | 2020-09-19 | 21 | 34d |  | 2,753.89 |
| 24 | 7 | **CIELORRASO** | 10d | 2020-09-03 | 2020-09-13 |  | 0d |  | 2,357.52 |
| 25 | 7.1 | LIMPIEZA, DESINFECCION Y SELLADO DE CIELO RASO | 10d | 2020-09-03 | 2020-09-13 | 12 | 0d |  | 2,357.52 |

| ID | WBS | Task | Duration | Start | Finish | Predecessors | Total slack | Free slack | Cost |
| --- | --- | --- | --- | --- | --- | --- | --- | --- | --- |
| 26 | 8 | **CARPINTERIA DE MADERA** | 8d | 2020-09-13 | 2020-09-21 |  | 0d |  | 2,710.66 |
| 27 | 8.1 | PUERTA TABLERO REBAJADO C/MARCO DOS HOJAS | 4d | 2020-09-13 | 2020-09-17 | 25 | 0d |  | 1,529.5 |
| 28 | 8.2 | PUERTAS DE MADERA CONTRAPLACADA C/MARCO UNA HOJA | 2d | 2020-09-17 | 2020-09-19 | 27 | 0d |  | 974 |
| 29 | 8.3 | LIMPIEZA Y DESINFECCIÓN DE VENTANA (INC. VIDRIO) | 2d | 2020-09-19 | 2020-09-21 | 28 | 32d |  | 207.16 |
| 30 | 9 | **CERRAJERIA** | 3d | 2020-09-18 | 2020-09-21 |  | 0d |  | 653 |
| 31 | 9.1 | BISAGRA CAPUCHINA DE ACERO DE 3"X4" | 1d | 2020-09-18 | 2020-09-19 | 28FF | 0d |  | 333 |
| 32 | 9.2 | CERRADURA PARA PUERTAS TRES GOLPES | 1d | 2020-09-19 | 2020-09-20 | 31 | 0d |  | 125 |
| 33 | 9.3 | CERRADURA TIPO PERILLA CON SEGURIDAD | 1d | 2020-09-20 | 2020-09-21 | 32 | 0d |  | 195 |
| 34 | 10 | **PINTURA** | 21d | 2020-09-21 | 2020-10-12 |  | 0d |  | 33,639.56 |
| 35 | 10.1 | RESANE DE PAREDES INTERIORES Y EXTERIORES | 7d | 2020-09-21 | 2020-09-28 | 33 | 0d |  | 9,297.08 |
| 36 | 10.2 | PINTADO DE MURO INTERIOR CON PINTURA VINÍLICA ANTIBACTERIAL | 7d | 2020-09-28 | 2020-10-05 | 35 | 0d |  | 12,883.6 |
| 37 | 10.3 | PINTADO DE MURO EXTERIOR CON LATEX SATINADO 2 MANOS | 5d | 2020-10-05 | 2020-10-10 | 36 | 11d | 0d | 8,001.77 |
| 38 | 10.4 | PINTURA EN PUERTAS DE MADERA AL OLEO - 2 MANOS | 2d | 2020-10-10 | 2020-10-12 | 37 | 11d |  | 1,380.09 |
| 39 | 10.5 | PINTURA EN DERRAMES AL LATEX SATINADO 2 MANOS | 1d | 2020-10-04 | 2020-10-05 | 36FF | 0d |  | 496.97 |
| 40 | 10.6 | PINTURA DE CONTRAZOCALO CON ESMALTE, H= 0.30m | 2d | 2020-10-08 | 2020-10-10 | 37FF | 13d |  | 1,580.05 |
| 41 | 11 | **INSTALACIONES SANITARIAS** | 9d | 2020-08-28 | 2020-09-06 |  | 34d |  | 13,174.94 |
| 42 | 11.1 | **SISTEMA DE AGUA** | 9d | 2020-08-28 | 2020-09-06 |  | 34d |  | 3,990.28 |
| 43 | 11.1.1 | ROTURA DE PISO DE CEMENTO | 2d | 2020-08-28 | 2020-08-30 | 3 | 34d | 0d | 2,262.46 |
| 44 | 11.1.2 | CONCRETO f'c=175kg/cm2 EN PISO | 1d | 2020-09-05 | 2020-09-06 | 64 | 34d | 0d | 673.98 |
| 45 | 11.1.3 | VALVULA DE COMPUERTA DE 1/2" | 1d | 2020-08-30 | 2020-08-31 | 43 | 53d |  | 185.36 |
| 46 | 11.1.4 | SALIDA DE AGUA CON TUBERÍA DE PVC SAP C-10 Ø 1/2" | 1d | 2020-08-30 | 2020-08-31 | 43 | 34d | 0d | 525.69 |
| 47 | 11.1.5 | RED DE DISTRIBUCION TUBERIA PVC SP C-10 Ø DE 1/2" | 1d | 2020-08-30 | 2020-08-31 | 43 | 53d |  | 313.83 |
| 48 | 11.1.6 | CODO PVC-SAP 1/2"x90 | 1d | 2020-08-30 | 2020-08-31 | 43 | 53d |  | 21.42 |
| 49 | 11.1.7 | TEE PVC-SAP 1/2" | 1d | 2020-08-30 | 2020-08-31 | 43 | 52d | 0d | 7.54 |

| ID | WBS | Task | Duration | Start | Finish | Predecessors | Total slack | Free slack | Cost |
| --- | --- | --- | --- | --- | --- | --- | --- | --- | --- |
| 50 | 11.2 | **SISTEMA DE DESAGÜE** | 1d | 2020-08-31 | 2020-09-01 |  | 52d |  | 1,542.69 |
| 51 | 11.2.1 | SALIDA DE DESAGUE PVC PARA DESAGUE DE 4" | 1d | 2020-08-31 | 2020-09-01 | 49 | 52d |  | 155.58 |
| 52 | 11.2.2 | SALIDA DE DESAGUE PVC PARA DESAGUE DE 2" | 1d | 2020-08-31 | 2020-09-01 | 49 | 52d |  | 215.96 |
| 53 | 11.2.3 | SALIDAS DE PVC PARA SUMIDERO DE 2" | 1d | 2020-08-31 | 2020-09-01 | 49 | 52d |  | 63.22 |
| 54 | 11.2.4 | RED DE DESAGUE TUBERIA PVC DE 4" | 1d | 2020-08-31 | 2020-09-01 | 49 | 52d |  | 684.9 |
| 55 | 11.2.5 | RED DE DESAGUE TUBERIA PVC DE 2" | 1d | 2020-08-31 | 2020-09-01 | 49 | 52d |  | 111.56 |
| 56 | 11.2.6 | CODO PVC SAL 2"X90° | 1d | 2020-08-31 | 2020-09-01 | 49 | 52d |  | 178.32 |
| 57 | 11.2.7 | YEE DE PVC SAL SP,RAMAL CON REDUCCION DE 4"-2" | 1d | 2020-08-31 | 2020-09-01 | 49 | 52d |  | 39.47 |
| 58 | 11.2.8 | REGISTROS DE BRONCE DE 2" | 1d | 2020-08-31 | 2020-09-01 | 49 | 52d |  | 93.68 |
| 59 | 11.3 | **APARATOS SANITARIOS** | 5d | 2020-08-31 | 2020-09-05 |  | 34d |  | 7,641.97 |
| 60 | 11.3.1 | LAVAMANOS DE CERAMICA VITRIFICADA TIPO OVALIN SOBRE PLANCHA DE CONCRETO, CONTROL DE MANO, SOLO AGUA FRIA (A-5) | 1d | 2020-08-31 | 2020-09-01 | 46 | 34d | 0d | 193.92 |
| 61 | 11.3.2 | INODORO DE CERAMICA O LOZA VITRIFICADA DE TANQUE BAJO | 1d | 2020-09-01 | 2020-09-02 | 60 | 34d | 0d | 269.02 |
| 62 | 11.3.3 | URINARIO INDIVIDUAL DE CERAMICA O LOZA VITRIFICADA | 1d | 2020-09-02 | 2020-09-03 | 61 | 34d | 0d | 229.03 |
| 63 | 11.3.4 | LAVAMANOS DE PARED A PEDAL (INC. GRIFO) | 1d | 2020-09-03 | 2020-09-04 | 62 | 34d | 0d | 1,950 |
| 64 | 11.3.5 | COLOCACIÓN DE ACCESORIOS SANITARIOS (AGUA Y DESAGUE) | 1d | 2020-09-04 | 2020-09-05 | 63 | 34d | 0d | 5,000 |
| 65 | 12 | **INSTALACIONES ELÉCTRICAS** | 8d | 2020-10-05 | 2020-10-13 |  | 0d |  | 6,625.68 |
| 66 | 12.1 | REPARACIÓN DE SALIDA PARA CENTRO DE LUZ EN TECHO | 1d | 2020-10-05 | 2020-10-06 | 39 | 0d |  | 611.2 |
| 67 | 12.2 | SALIDA PARA CENTRO DE LUZ EN TECHO | 1d | 2020-10-06 | 2020-10-07 | 66 | 0d |  | 244.48 |
| 68 | 12.3 | INTERRUPTOR UNIPOLAR SIMPLE | 1d | 2020-10-07 | 2020-10-08 | 67 | 0d |  | 141.68 |
| 69 | 12.4 | SALIDA PARA TOMACORRIENTE EQUIPAMIENTO MEDICO | 2d | 2020-10-08 | 2020-10-10 | 68 | 0d |  | 830.4 |
| 70 | 12.5 | RIELES DE PARED PARA CABLE ELECTRICO | 1d | 2020-10-06 | 2020-10-07 | 66 | 16d |  | 255.6 |
| 71 | 12.6 | SPOT LIGHT ADOSABLE CON AHORRADOR COMPACTO DE 2x32 W. | 1d | 2020-10-10 | 2020-10-11 | 69 | 0d |  | 2,920.82 |
| 72 | 12.7 | TABLERO ELECTRICO TN-A02 | 1d | 2020-10-11 | 2020-10-12 | 71 | 0d |  | 637.37 |
| 73 | 12.8 | POZO DE PUESTA A TIERRA | 1d | 2020-10-12 | 2020-10-13 | 72 | 0d |  | 984.13 |

| ID | WBS | Task | Duration | Start | Finish | Predecessors | Total slack | Cost |
| --- | --- | --- | --- | --- | --- | --- | --- | --- |
| 74 | 2 | **SP: EQUIPAMIENTO Y MOBILIARIO** | 10d | 2020-10-13 | 2020-10-23 |  | 0d | 353,564.87 |
| 75 | 13 | **EQUIPAMIENTO Y MOBILIARIO** | 10d | 2020-10-13 | 2020-10-23 |  | 0d | 353,564.87 |
| 76 | 13.1 | **EQUIPAMIENTO MEDICO** | 2d | 2020-10-13 | 2020-10-15 |  | 0d | 125,385.53 |
| 77 | 13.1.1 | MONITOR DE FUNCIONES VITALES DE 05 PARÁMETROS | 1d | 2020-10-13 | 2020-10-14 | 73 | 0d | 29,063.44 |
| 78 | 13.1.2 | ASPIRADOR DE SECRECIONES RODABLE | 1d | 2020-10-14 | 2020-10-15 | 77 | 8d | 49,903.75 |
| 79 | 13.1.3 | BOMBA DE INFUSIÓN DE DOS CANALES | 1d | 2020-10-14 | 2020-10-15 | 77 | 8d | 32,193.34 |
| 80 | 13.1.4 | NEBULIZADOR | 1d | 2020-10-14 | 2020-10-15 | 77 | 0d | 14,225 |
| 81 | 13.2 | **EQUIPAMIENTO COMPLEMENTARIO** | 3d | 2020-10-15 | 2020-10-18 |  | 0d | 113,357.34 |
| 82 | 13.2.1 | OXÍMETRO DE PULSO | 1d | 2020-10-15 | 2020-10-16 | 80 | 7d | 5,990 |
| 83 | 13.2.2 | CAMARA DE AISLAMIENTO Y TRANSPORTE | 1d | 2020-10-15 | 2020-10-16 | 80 | 0d | 48,088.33 |
| 84 | 13.2.3 | BALANZA MECÁNICA CON TALLIMETRO ADULTO | 1d | 2020-10-16 | 2020-10-17 | 83 | 0d | 1,475 |
| 85 | 13.2.4 | PULSIOXÍMETRO PORTATIL | 1d | 2020-10-16 | 2020-10-17 | 83 | 6d | 3,270.67 |
| 86 | 13.2.5 | ANALIZADOR AUTOMÁTICO DE GASES ARTERIALES Y ELECTROLITOS | 1d | 2020-10-16 | 2020-10-17 | 83 | 6d | 31,296.67 |
| 87 | 13.2.6 | ANALIZADOR BIOQUÍMICO SEMI AUTOMÁTICO | 1d | 2020-10-17 | 2020-10-18 | 84 | 0d | 23,236.67 |
| 88 | 13.3 | **EQUIPO ELECTROMECÁNICO** | 1d | 2020-10-18 | 2020-10-19 |  | 0d | 76,750 |
| 89 | 13.3.1 | CONCENTRADOR DE OXÍGENO | 1d | 2020-10-18 | 2020-10-19 | 87 | 0d | 76,750 |
| 90 | 13.4 | **MOBILIARIO CLÍNICO** | 4d | 2020-10-19 | 2020-10-23 |  | 0d | 38,072 |
| 91 | 13.4.1 | CAMA CLÍNICA RODABLE | 1d | 2020-10-19 | 2020-10-20 | 89 | 0d | 22,500 |
| 92 | 13.4.2 | MESA DE ACERO INOXIDABLE RODABLE PARA MÚLTIPLES USOS | 1d | 2020-10-20 | 2020-10-21 | 91 | 0d | 11,700 |
| 93 | 13.4.3 | MESA (DIVAN) PARA EXAMENES Y CURACIONES | 1d | 2020-10-21 | 2020-10-22 | 92 | 0d | 1,375 |
| 94 | 13.4.4 | VITRINA DE ACERO INOXIDABLE PARA INSTRUMENTAL Y MATERIAL ESTERIL DE UN CUERPO | 1d | 2020-10-22 | 2020-10-23 | 93 | 0d | 2,497 |
